# Projeto Vídeo Institucional V3.0 (Recursos Superalocados)

Schedule from MS Project, 2016-01-04 to 2016-04-04, costs in R$.

## Calendars

- Padrão: Mon-Fri 09:00-12:00, 13:00-18:00; Sat-Sun off. Exceptions (off unless hours are given): 2016-01-14 to 2016-01-15 (Recesso empresarial), 2016-02-08 to 2016-02-09 (Carnaval), 2016-02-10 13:00-17:00 (Quarta-Feira de Cinzas), 2016-03-25 (Sexta-Feira Santa).

## Resources

| Resource | Unit | Rate |
| --- | --- | --- |
| Cenografista |  | 100 |
| Figurinista |  | 200 |
| Maquiador |  | 100 |
| Produtor |  | 150 |
| Editor |  | 200 |
| Animador (Efeitos Especiais) |  | 200 |
| Diretor |  | 300 |
| Diretor de Fotografia |  | 200 |
| Designer |  | 100 |
| Desenhista |  | 150 |
| Técnico de Áudio |  | 150 |
| Técnico de Filmagem |  | 150 |
| Técnico de Iluminação |  | 150 |
| Cameraman |  | 100 |
| Iluminador |  | 100 |
| Operador de Som |  | 100 |
| Conservadora |  |  |
| Projeto Cenário |  |  |
| Câmeras | Diária | 300 |
| Microfones | Diária | 50 |
| Cabos | Metros | 15 |
| Spots de Luz | Diária | 150 |
| Mesa de Som | Diária | 200 |
| Mesa de Luz | Diária | 200 |

## Schedule

| ID | WBS | Task | Type | Duration | Start | Finish | Predecessors | Total slack | Deadline | Resources | Work | Cost |
| --- | --- | --- | --- | --- | --- | --- | --- | --- | --- | --- | --- | --- |
| 1 | 1 | Início do Projeto | milestone | 0d | 2016-01-04 | 2016-01-04 |  | 0d |  |  |  |  |
| 2 | 2 | **Etapa 1 - Criação** |  | 13d | 2016-01-04 | 2016-01-22 | 1 | 0d |  |  | 92h | 20,000 |
| 3 | 2.1 | Brainstorm de criação |  | 4h | 2016-01-04 | 2016-01-04 |  | 0d |  | Diretor; Diretor de Fotografia; Editor; Animador (Efeitos Especiais); Cenografista | 20h | 4,000 |
| 4 | 2.2 | Criar Roteiro |  | 10d | 2016-01-05 | 2016-01-20 | 3FS+4h | 0d |  | Diretor [50%] | 40h | 12,000 |
| 5 | 2.3 | Criar Storyboard |  | 2d | 2016-01-21 | 2016-01-22 | 4 | 0d |  | Desenhista; Designer | 32h | 4,000 |
| 6 | 3 | Término Etapa 1 | milestone | 0d | 2016-01-22 | 2016-01-22 | 2 | 0d |  |  |  |  |
| 7 | 4 | **Etapa 2 - Planejamento** |  | 22d | 2016-01-25 | 2016-03-01 | 6 | 0d |  |  | 202h | 44,500 |
| 8 | 4.1 | Selecionar Casting |  | 5d | 2016-01-25 | 2016-02-03 |  | 0d |  | Diretor [50%] | 20h | 6,000 |
| 9 | 4.2 | Selecionar Garoto Propaganda |  | 1d | 2016-02-02 | 2016-02-03 | 8FF | 17d |  | Diretor [50%] | 4h | 1,200 |
| 10 | 4.3 | Selecionar Locações de Filmagem |  | 15d | 2016-01-25 | 2016-02-19 | 8SS | 0d |  | Diretor [50%] | 60h | 18,000 |
| 11 | 4.4 | Definir Equipamentos de Filmagem |  | 1d | 2016-02-22 | 2016-02-22 | 10 | 0d |  | Diretor de Fotografia [50%] | 4h | 800 |
| 12 | 4.5 | Definir Equipe de Filmagem |  | 1d | 2016-02-22 | 2016-02-22 | 11SS | 0d |  | Diretor de Fotografia | 8h | 1,600 |
| 13 | 4.6 | Definir Equipamentos de Audio |  | 1d | 2016-02-22 | 2016-02-22 | 10 | 0d |  | Técnico de Áudio [25%] | 2h | 300 |
| 14 | 4.7 | Definir Equipe de Audio |  | 1d | 2016-02-22 | 2016-02-22 | 13SS | 0d |  | Técnico de Áudio [50%] | 4h | 600 |
| 15 | 4.8 | Definir Equipamentos de Iluminação |  | 1d | 2016-02-22 | 2016-02-22 | 10 | 0d |  | Técnico de Iluminação [50%] | 4h | 600 |
| 16 | 4.9 | Definir Equipe de Iluminação |  | 1d | 2016-02-22 | 2016-02-22 | 15SS | 0d |  | Técnico de Iluminação | 8h | 1,200 |
| 17 | 4.10 | Planejar Estrutura de Produção |  | 4d | 2016-02-23 | 2016-02-26 | 11, 12, 13, 14, 15, 16 | 0d |  | Produtor | 32h | 4,800 |
| 18 | 4.11 | Planejar Cenários |  | 2d | 2016-02-29 | 2016-03-01 | 17 | 0d |  | Cenografista | 16h | 1,600 |
| 19 | 4.12 | Planejar Figurino |  | 1d | 2016-02-29 | 2016-02-29 | 17 | 1d |  | Figurinista | 8h | 1,600 |
| 20 | 4.13 | Planejar Deslocamento das Equipes |  | 1d | 2016-02-22 | 2016-02-22 | 10 | 6d |  | Produtor [50%] | 4h | 600 |
| 21 | 4.14 | Definir Cronograma de Filmagens |  | 2d | 2016-02-29 | 2016-03-01 | 17 | 0d |  | Diretor [50%]; Produtor [50%] | 16h | 3,600 |
| 22 | 4.15 | Definir Cronograma de Edição |  | 2d | 2016-02-29 | 2016-03-01 | 21SS | 0d |  | Editor [25%] | 4h | 800 |
| 23 | 4.16 | Criar Orçamento e Planejamento Financeiro |  | 1d | 2016-02-29 | 2016-02-29 | 17 | 1d | 2016-03-01 | Produtor | 8h | 1,200 |
| 24 | 5 | Término Etapa 2 | milestone | 0d | 2016-03-01 | 2016-03-01 | 7 | 0d |  |  |  |  |

Notes:
- 3: Objetivos: / ·Definir conceito e ideia geral da campanha / ·Definir ações / ·Definir garoto propaganda / OBS: A criação da campanha deve se adequar a realidade de verba definida em reunião conjunta com a equipe de planejamento e cliente, vide documento "Briefing" em anexo.

| ID | WBS | Task | Type | Duration | Start | Finish | Predecessors | Total slack | Constraint | Resources | Work | Cost |
| --- | --- | --- | --- | --- | --- | --- | --- | --- | --- | --- | --- | --- |
| 25 | 6 | **Etapa 3 - Execução** |  | 8.5d | 2016-03-02 | 2016-03-14 | 24 | 0d |  |  | 628h | 126,475 |
| 26 | 6.1 | Contratações dos Serviços e Equipes |  | 2d | 2016-03-02 | 2016-03-03 |  | 0d |  | Produtor [50%] | 8h | 1,200 |
| 27 | 6.2 | Montagem do Local |  | 1d | 2016-03-04 | 2016-03-04 | 26 | 0d |  | Produtor [1000%] | 80h | 12,000 |
| 28 | 6.3 | Montagem do Cenário |  | 1d | 2016-03-07 | 2016-03-07 | 27 | 0d |  | Projeto Cenário [0.1%] |  | 15,000 |
| 29 | 6.4 | Montagem dos Equipamentos de Filmagem |  | 4h | 2016-03-08 | 2016-03-08 | 28FS+4h | 0d |  | Câmeras [1.25 Diária]; Cabos [12.5 Metros]; Técnico de Filmagem [500%] | 20h | 5,250 |
| 30 | 6.5 | Montagem dos Equipamentos de Audio |  | 4h | 2016-03-08 | 2016-03-08 | 28FS+4h | 0d |  | Mesa de Som [0.25 Diária]; Microfones [0.5 Diária]; Cabos [3.75 Metros]; Técnico de Áudio [300%] | 12h | 2,325 |
| 31 | 6.6 | Montagem dos Equipamentos de Iluminação |  | 4h | 2016-03-08 | 2016-03-08 | 28FS+4h | 0d |  | Mesa de Luz [0.12 Diária]; Spots de Luz [1.5 Diária]; Técnico de Iluminação [500%] | 20h | 4,000 |
| 32 | 6.7 | Ensaios |  | 1d | 2016-03-09 | 2016-03-09 | 29, 30, 31 | 0d | must start on 2016-03-09 | Diretor; Diretor de Fotografia; Figurinista; Técnico de Áudio; Técnico de Filmagem; Técnico de Iluminação; Mesa de Luz [0.12 Diária]; Mesa de Som [0.25 Diária]; Spots de Luz [1.5 Diária]; Cabos [16.25 Metros]; Microfones [0.5 Diária]; Câmeras [1.25 Diária]; Cameraman [1000%]; Produtor [500%]; Operador de Som [300%] | 192h | 33,150 |
| 33 | 6.8 | Filmagens |  | 1d | 2016-03-10 | 2016-03-10 | 32 | 0d | must start on 2016-03-10 | Câmeras [1.25 Diária]; Cabos [16.25 Metros]; Operador de Som [300%]; Diretor; Diretor de Fotografia; Figurinista; Técnico de Áudio; Técnico de Filmagem; Técnico de Iluminação; Mesa de Luz [0.12 Diária]; Mesa de Som [0.25 Diária]; Spots de Luz [1.5 Diária]; Microfones [0.5 Diária]; Produtor [500%] | 112h | 25,150 |
| 34 | 6.9 | Desmontagem |  | 1d | 2016-03-11 | 2016-03-11 | 33 | 0d |  | Produtor [1000%]; Técnico de Áudio [300%]; Técnico de Iluminação [500%]; Técnico de Filmagem [500%] | 184h | 27,600 |
| 35 | 6.10 | Limpeza |  | 4h | 2016-03-14 | 2016-03-14 | 34 | 0d |  | Conservadora [0.1%] |  | 800 |
| 36 | 7 | Término Etapa 3 | milestone | 0d | 2016-03-14 | 2016-03-14 | 25FS+4h | 0d |  |  |  |  |
| 37 | 8 | **Etapa 4 - Pós Produção** |  | 13.5d | 2016-03-15 | 2016-04-04 | 36 | 0d |  |  | 76h | 15,200 |
| 38 | 8.1 | Decupagem de Material |  | 1d | 2016-03-15 | 2016-03-15 |  | 0d |  | Editor | 8h | 1,600 |
| 39 | 8.2 | Edição |  | 5d | 2016-03-16 | 2016-03-22 | 38 | 0d |  | Editor [50%] | 20h | 4,000 |
| 40 | 8.3 | Efeitos Especiais |  | 5d | 2016-03-23 | 2016-03-30 | 39 | 0d |  | Animador (Efeitos Especiais) | 40h | 8,000 |
| 41 | 8.4 | Tratamento e Correções |  | 2d | 2016-03-31 | 2016-04-01 | 40 | 0d |  | Animador (Efeitos Especiais) [50%] | 8h | 1,600 |
| 42 | 8.5 | Renderização |  | 4h | 2016-04-04 | 2016-04-04 | 41 | 0d |  |  |  |  |
| 43 | 8.6 | Entrega | milestone | 0d | 2016-04-04 | 2016-04-04 | 42 | 0d |  |  |  |  |
| 44 | 9 | Término do Projeto | milestone | 0d | 2016-04-04 | 2016-04-04 | 37 | 0d |  |  |  |  |
