Schedule from MS Project, 2016-01-04 to 2016-03-14.

## Calendars

- Padrão: Mon-Fri 09:00-12:00, 13:00-18:00; Sat-Sun off. Exceptions (off unless hours are given): 2016-01-14 to 2016-01-15 (Recesso empresarial), 2016-02-08 to 2016-02-09 (Carnaval), 2016-02-10 13:00-17:00 (Quarta-Feira de Cinzas).

## Schedule

| ID | WBS | Task | Type | Duration | Start | Finish | Predecessors | Total slack | Free slack | Deadline |
| --- | --- | --- | --- | --- | --- | --- | --- | --- | --- | --- |
| 1 | 1 | Início do Projeto | milestone | 0d | 2016-01-04 | 2016-01-04 |  | 3.5d | 0d |  |
| 2 | 2 | **Etapa 1 - Criação** |  | 11d | 2016-01-04 | 2016-01-20 | 1 | 0.5d | 0d |  |
| 3 | 2.1 | Brainstorm de criação |  | 4h | 2016-01-04 | 2016-01-04 |  | 3.5d | 0d |  |
| 4 | 2.2 | Criar Roteiro |  | 10d | 2016-01-05 | 2016-01-20 | 3FS+4h | 3.5d | 0d |  |
| 5 | 2.3 | Criar Storyboard |  | 2d | 2016-01-05 | 2016-01-06 | 4SS | 8d |  |  |
| 6 | 3 | Término Etapa 1 | milestone | 0d | 2016-01-20 | 2016-01-20 | 2 | 3.5d | 0d |  |
| 7 | 4 | **Etapa 2 - Planejamento** |  | 15d | 2016-01-21 | 2016-02-17 | 6 | 0.5d | 0d |  |
| 8 | 4.1 | Selecionar Casting |  | 5d | 2016-01-21 | 2016-02-01 |  | 0.5d | 0d |  |
| 9 | 4.2 | Selecionar Garoto Propaganda |  | 1d | 2016-01-29 | 2016-02-01 | 8FF | 13.5d |  |  |
| 10 | 4.3 | Selecionar Locações de Filmagem |  | 15d | 2016-01-21 | 2016-02-17 | 8SS | 0.5d | 0d |  |
| 11 | 4.4 | Definir Equipamentos de Filmagem |  | 1d | 2016-01-21 | 2016-01-21 | 10SS | 0.5d | 0d |  |
| 12 | 4.5 | Definir Equipe de Filmagem |  | 1d | 2016-01-22 | 2016-01-22 | 11 | 0.5d | 0d |  |
| 13 | 4.6 | Definir Equipamentos de Audio |  | 1d | 2016-01-25 | 2016-01-26 | 12 | 0.5d | 0d |  |
| 14 | 4.7 | Definir Equipe de Audio |  | 1d | 2016-01-27 | 2016-01-28 | 13 | 0.5d | 0d |  |
| 15 | 4.8 | Definir Equipamentos de Iluminação |  | 1d | 2016-01-27 | 2016-01-28 | 14SS | 0.5d | 0d |  |
| 16 | 4.9 | Definir Equipe de Iluminação |  | 1d | 2016-01-27 | 2016-01-28 | 15SS | 0.5d | 0d |  |
| 17 | 4.10 | Planejar Estrutura de Produção |  | 4d | 2016-01-29 | 2016-02-04 | 16 | 0.5d | 0d |  |
| 18 | 4.11 | Planejar Cenários |  | 2d | 2016-01-29 | 2016-02-02 | 17SS | 0.5d | 0d |  |
| 19 | 4.12 | Planejar Figurino |  | 1d | 2016-01-29 | 2016-02-01 | 18SS | 0.5d | 0d |  |
| 20 | 4.13 | Planejar Deslocamento das Equipes |  | 1d | 2016-01-29 | 2016-02-01 | 19SS | 0.5d | 0d |  |
| 21 | 4.14 | Definir Cronograma de Filmagens |  | 2d | 2016-01-27 | 2016-02-01 | 20FF | 0.5d | 0d |  |
| 22 | 4.15 | Definir Cronograma de Edição |  | 2d | 2016-01-27 | 2016-02-01 | 21FF | 0.5d | 0d |  |
| 23 | 4.16 | Criar Orçamento e Planejamento Financeiro |  | 1d | 2016-02-01 | 2016-02-02 | 22 | 0.5d |  | 2016-02-02 |
| 24 | 5 | Término Etapa 2 | milestone | 0d | 2016-02-17 | 2016-02-17 | 7 | 3.5d | 0d |  |

Notes:
- 3: Objetivos: / ·Definir conceito e ideia geral da campanha / ·Definir ações / ·Definir garoto propaganda / OBS: A criação da campanha deve se adequar a realidade de verba definida em reunião conjunta com a equipe de planejamento e cliente, vide documento "Briefing" em anexo.

| ID | WBS | Task | Type | Duration | Start | Finish | Predecessors | Total slack | Free slack | Constraint |
| --- | --- | --- | --- | --- | --- | --- | --- | --- | --- | --- |
| 25 | 6 | **Etapa 3 - Execução** |  | 9d | 2016-02-18 | 2016-03-01 | 24 | 0d |  |  |
| 26 | 6.1 | Contratações dos Serviços e Equipes |  | 2d | 2016-02-18 | 2016-02-19 |  | 3.5d | 0d |  |
| 27 | 6.2 | Montagem do Local |  | 1d | 2016-02-22 | 2016-02-22 | 26 | 3.5d | 0d |  |
| 28 | 6.3 | Montagem do Cenário |  | 1d | 2016-02-22 | 2016-02-22 | 27SS | 3.5d | 0d |  |
| 29 | 6.4 | Montagem dos Equipamentos de Filmagem |  | 4h | 2016-02-23 | 2016-02-23 | 28 | 3.5d | 0d |  |
| 30 | 6.5 | Montagem dos Equipamentos de Audio |  | 4h | 2016-02-23 | 2016-02-23 | 29SS | 3.5d | 0d |  |
| 31 | 6.6 | Montagem dos Equipamentos de Iluminação |  | 4h | 2016-02-23 | 2016-02-23 | 30SS | 3.5d |  |  |
| 32 | 6.7 | Ensaios |  | 1d | 2016-02-29 | 2016-02-29 | 31 | 0d |  | must start on 2016-02-29 |
| 33 | 6.8 | Filmagens |  | 1d | 2016-02-29 | 2016-02-29 | 32SS | 0d |  | must start on 2016-02-29 |
| 34 | 6.9 | Desmontagem |  | 1d | 2016-03-01 | 2016-03-01 | 33 | 0d |  |  |
| 35 | 6.10 | Limpeza |  | 4h | 2016-03-01 | 2016-03-01 | 34SS | 0.5d |  |  |
| 36 | 7 | Término Etapa 3 | milestone | 0d | 2016-03-01 | 2016-03-01 | 25 | 0d |  |  |
| 37 | 8 | **Etapa 4 - Pós Produção** |  | 9d | 2016-03-02 | 2016-03-14 | 36 | 0d |  |  |
| 38 | 8.1 | Decupagem de Material |  | 1d | 2016-03-02 | 2016-03-02 |  | 0d |  |  |
| 39 | 8.2 | Edição |  | 5d | 2016-03-03 | 2016-03-10 | 38FS+4h | 0d |  |  |
| 40 | 8.3 | Efeitos Especiais |  | 5d | 2016-03-03 | 2016-03-10 | 39SS | 0d |  |  |
| 41 | 8.4 | Tratamento e Correções |  | 2d | 2016-03-10 | 2016-03-14 | 40 | 0d |  |  |
| 42 | 8.5 | Renderização |  | 4h | 2016-03-14 | 2016-03-14 | 41 | 0d |  |  |
| 43 | 8.6 | Entrega | milestone | 0d | 2016-03-14 | 2016-03-14 | 42 | 0d |  |  |
| 44 | 9 | Término do Projeto | milestone | 0d | 2016-03-14 | 2016-03-14 | 37 | 0d |  |  |
